# Children's Gourmet Cookbook

How a schedule from MS Project changed from version to version. A marks actual dates.

## Version 1 (saved 2025-08-30, file Guided Tour.mpp)

Note of the change: Lê Vũ Kiệt - 1150080100 - CNPM2 nộp bài tập tuần 1

| ID | WBS | Task | Duration | Start | Finish | Predecessors | Total float |
| --- | --- | --- | --- | --- | --- | --- | --- |
| 1 | 1 | **Acquisition** | 25d | 2015-07-13 | 2015-08-14 |  | 0d |
| 2 |  | Manuscript received | 0d | 2015-07-13 | 2015-07-13 |  | 0d |
| 3 |  | Content edit | 25d | 2015-07-13 | 2015-08-14 | 2 | 0d |
| 4 |  | Handoff to Editorial | 0d | 2015-08-14 | 2015-08-14 | 3 | 0d |
| 5 | 2 | **Editorial** | 30d | 2015-08-17 | 2015-09-25 | 1 | 0d |
| 6 |  | Organize manuscript for copyedit | 5d | 2015-08-17 | 2015-08-21 |  | 0d |
| 7 |  | Copyedit | 20d | 2015-08-24 | 2015-09-18 | 6 | 0d |
| 8 |  | Copyedit incorp | 5d | 2015-09-21 | 2015-09-25 | 7 | 0d |
| 9 |  | Handoff to Production | 0d | 2015-09-25 | 2015-09-25 | 8 | 0d |
| 10 | 3 | **Design and Production** | 20d | 2015-08-17 | 2015-09-11 | 5SS | 10d |
| 11 |  | Cover design | 5d | 2015-08-17 | 2015-08-21 |  | 10d |
| 12 |  | Set pages | 10d | 2015-08-24 | 2015-09-04 | 11 | 10d |
| 13 |  | Interior illustration design | 15d | 2015-08-24 | 2015-09-11 | 12SS | 10d |
| 14 | 4 | **Pages review** | 20d | 2015-09-28 | 2015-10-23 | 10, 5 | 0d |
| 15 |  | Proofread and index | 10d | 2015-09-28 | 2015-10-09 |  | 0d |
| 16 |  | Incorporate 1st Pages review | 5d | 2015-10-12 | 2015-10-16 | 15 | 0d |
| 17 |  | Send proofed pages to Production | 0d | 2015-10-16 | 2015-10-16 | 16 | 0d |
| 18 |  | Enter page corrections and index | 5d | 2015-10-19 | 2015-10-23 | 17 | 0d |
| 19 | 5 | **Color prep and printing** | 29d | 2015-10-26 | 2015-12-03 | 14 | 0d |
| 20 |  | Send to color house | 1d | 2015-10-26 | 2015-10-26 |  | 0d |
| 21 |  | Generate proofs | 5d | 2015-10-27 | 2015-11-02 | 20 | 0d |
| 22 |  | Print and ship | 20d | 2015-11-06 | 2015-12-03 | 21FS+3d | 0d |

## Version 2 (saved 2025-10-12, file Fine Tuning Tasks_Start.mpp)

Note of the change: done

Last finish 2015-12-03 → 2016-02-26 (+85d).

Added:

| ID | Task | Duration | Start | Finish | Predecessors | Resources |
| --- | --- | --- | --- | --- | --- | --- |
| 4 | Author review of content edit | 10d | 2015-04-30 | 2015-05-13 | 3 | Tad Orman; Copyeditors [25%] |
| 9 | Author review of copyedit | 10d | 2015-10-01 | 2015-10-15 | 8 | Tad Orman; Copyeditors [25%] |
| 15 | **1st Pages review** | 25d | 2015-11-10 | 2015-12-14 | 14 |  |
| 21 | **2nd Pages review** | 10d | 2015-12-15 | 2015-12-28 |  |  |
| 22 | Proof and review | 5d | 2015-12-15 | 2015-12-21 | 20 | Hany Morcos |
| 23 | Send proofed pages to Production | 0d | 2015-12-22 | 2015-12-22 | 22 | Hany Morcos |
| 24 | Final review | 5d | 2015-12-22 | 2015-12-28 | 23 | Jane Dow; Hany Morcos; Carole Poland |
| 25 | **Design book's companion website** | 5d | 2015-12-15 | 2015-12-21 |  |  |
| 26 | Create mockup | 3d | 2015-12-15 | 2015-12-17 | 20 | Luis Sousa |
| 27 | Review with author | 2d | 2015-12-18 | 2015-12-21 | 26 | Luis Sousa; Tad Orman |

Removed: 14 Pages review

Changed:

| ID | Task | Start | Finish | Duration | Complete | Total float | Predecessors | Other |
| --- | --- | --- | --- | --- | --- | --- | --- | --- |
| 1 | **Acquisition** | 2015-07-13 → 2015-04-06 (-98d) | 2015-08-14 → 2015-05-14 (-92d) | 25d → 28d |  |  |  |  |
| 2 | Manuscript received | 2015-07-13 → 2015-04-06 (-98d) | 2015-07-13 → 2015-04-06 (-98d) |  |  | 0d → none |  | resources Carole Poland → none |
| 3 | Content edit | 2015-07-13 → 2015-04-06 (-98d) | 2015-08-14 → 2015-04-29 (-107d) | 25d → 15d |  | 0d → none |  |  |
| 5 | Handoff to Editorial | 2015-08-14 → 2015-05-14 (-92d) | 2015-08-14 → 2015-05-14 (-92d) |  |  | 0d → none | 3 → 4 |  |
| 6 | **Editorial** | 2015-08-17 → 2015-08-28 A (+11d) | 2015-09-25 → 2015-10-20 (+25d) | 30d → 37d | 0% → 3% |  |  |  |
| 7 | Organize manuscript for copyedit | 2015-08-17 → 2015-08-28 A (+11d) | 2015-08-21 → 2015-09-03 (+13d) | 5d → 4.5d | 0% → 22% | 0d → none |  | resources Robin Wood → Hany Morcos |
| 8 | Copyedit | 2015-08-24 → 2015-09-03 (+10d) | 2015-09-18 → 2015-10-01 (+13d) |  |  | 0d → none |  | resources Copyeditors → Copyeditors [150%] |
| 10 | Copyedit incorp | 2015-09-21 → 2015-10-13 (+22d) | 2015-09-25 → 2015-10-19 (+24d) |  |  | 0d → none | 8 → 9FS-2.5% | resources Robin Wood → Hany Morcos |
| 11 | Handoff to Production | 2015-09-25 → 2015-10-20 (+25d) | 2015-09-25 → 2015-10-20 (+25d) |  |  | 0d → none |  | resources Robin Wood → Hany Morcos |
| 12 | **Design and Production** | 2015-08-17 → 2015-10-20 (+64d) | 2015-09-11 → 2015-12-28 (+108d) | 20d → 50d |  | 10d → 0d | 6SS → 6 |  |
| 13 | Set pages | 2015-08-24 → 2015-10-20 (+57d) | 2015-09-04 → 2015-11-09 (+66d) | 10d → 15d |  | 10d → none | 20 → none | resources Robin Wood; Katie Jordan → Jane Dow |
| 14 | Interior illustration design | 2015-08-24 → 2015-10-20 (+57d) | 2015-09-11 → 2015-11-09 (+59d) |  |  | 10d → none |  | resources William Flash → Luis Sousa |
| 16 | Proofread and index | 2015-09-28 → 2015-11-10 (+43d) | 2015-10-09 → 2015-11-23 (+45d) |  |  | 0d → none |  | constraint none → start no earlier than 2015-07-17; resources John Evans; Katie Jordan → Tad Orman; Copyeditors |
| 17 | Incorporate 1st Pages review | 2015-10-12 → 2015-11-24 (+43d) | 2015-10-16 → 2015-11-30 (+45d) |  |  | 0d → none |  | resources Carole Poland → Hany Morcos |
| 18 | Send proofed pages to Production | 2015-10-16 → 2015-12-01 (+46d) | 2015-10-16 → 2015-12-01 (+46d) |  |  | 0d → none |  | resources Robin Wood → Hany Morcos |
| 19 | Enter page corrections and index | 2015-10-19 → 2015-12-01 (+43d) | 2015-10-23 → 2015-12-07 (+45d) |  |  | 0d → none |  | resources Katie Jordan; Robin Wood → Jane Dow |
| 20 | Cover design | 2015-08-17 → 2015-12-08 (+113d) | 2015-08-21 → 2015-12-14 (+115d) |  |  | 10d → none | none → 19 | resources William Flash → Luis Sousa |
| 28 | **Color prep and printing** | 2015-10-26 → 2015-12-29 (+64d) | 2015-12-03 → 2016-02-26 (+85d) | 29d → 44d |  |  | Pages review → none |  |
| 29 | Send to color house | 2015-10-26 → 2015-12-29 (+64d) | 2015-10-26 → 2015-12-29 (+64d) |  |  | 0d → none | none → 24, 27 | resources Carole Poland → Hany Morcos |
| 30 | Generate proofs | 2015-10-27 → 2015-12-30 (+64d) | 2015-11-02 → 2016-01-12 (+71d) | 5d → 10d |  | 0d → none |  |  |
| 31 | Print and ship | 2015-11-06 → 2016-01-18 (+73d) | 2015-12-03 → 2016-02-26 (+85d) | 20d → 30d |  | 0d → none |  |  |
